# PGPI

Schedule from MS Project, 2025-09-16 to 2025-12-01, status date 2025-11-25, 3 hours a day, costs in €, A marks actual dates.

## Calendars

- Calendario-Sevilla: Mon-Fri 09:00-13:00, 15:00-19:00; Sat-Sun off. Exceptions (off unless hours are given): 2025-10-13 (Festividad Día de la Hispanidad), 2025-11-01 09:00-13:00, 15:00-19:00.

## Resources

| Resource | Rate |
| --- | --- |
| Director de proyecto 1 | 27.5 |
| Analista funcional | 25.47 |
| Programador 1 | 20 |
| Responsable de calidad | 24.18 |
| Director de proyecto 2 | 27.5 |
| Director de proyecto 3 | 27.5 |
| Director de proyecto 4 | 27.5 |
| Director de proyecto 5 | 27.5 |
| Programador 2 | 20 |
| Programador 3 | 20 |
| Programador 4 | 20 |
| Programador 5 | 20 |

## Schedule

| ID | WBS | Task | Type | Duration | Start | Finish | Predecessors | Complete | Baseline start | Baseline finish | Baseline duration | Constraint | Resources | Work | Actual work | Cost | Baseline cost | Actual cost |
| --- | --- | --- | --- | --- | --- | --- | --- | --- | --- | --- | --- | --- | --- | --- | --- | --- | --- | --- |
| 1 | 1 | **Proyecto** |  | 146.57d | 2025-09-16 A | 2025-12-01 A |  | 100% | 2025-09-16 | 2025-12-02 | 147d |  |  | 434h | 434h | 10,207.49 | 11,333.94 | 10,207.49 |
| 2 | 1.1 | **Inicio** |  | 5d | 2025-09-16 A | 2025-09-17 A |  | 100% | 2025-09-16 | 2025-09-17 | 5d |  |  | 33h | 33h | 907.5 | 907.5 | 907.5 |
| 3 | 1.1.1 | Registro de Interesados | manual | 3d | 2025-09-16 A | 2025-09-17 A |  | 100% | 2025-09-16 | 2025-09-17 | 3d |  | Director de proyecto 1 [20%]; Director de proyecto 2 [20%]; Director de proyecto 3 [20%]; Director de proyecto 4 [20%]; Director de proyecto 5 [20%] | 9h | 9h | 247.5 | 247.5 | 247.5 |
| 4 | 1.1.2 | Acta de Constitución | manual | 5d | 2025-09-16 A | 2025-09-17 A |  | 100% | 2025-09-16 | 2025-09-17 | 5d |  | Director de proyecto 1 [20%]; Director de proyecto 2 [20%]; Director de proyecto 3 [20%]; Director de proyecto 4 [20%]; Director de proyecto 5 [20%] | 15h | 15h | 412.5 | 412.5 | 412.5 |
| 5 | 1.1.3 | Registro de Supuestos | manual | 3d | 2025-09-16 A | 2025-09-17 A |  | 100% | 2025-09-16 | 2025-09-17 | 3d |  | Director de proyecto 1 [20%]; Director de proyecto 2 [20%]; Director de proyecto 3 [20%]; Director de proyecto 4 [20%]; Director de proyecto 5 [20%] | 9h | 9h | 247.5 | 247.5 | 247.5 |
| 6 | 1.2 | **Planificacion** |  | 60d | 2025-09-23 A | 2025-10-24 A |  | 100% | 2025-09-23 | 2025-10-24 | 60d |  |  | 123h | 123h | 3,352.05 | 3,352.05 | 3,352.05 |
| 7 | 1.2.1 | Plan de Dirección de proyecto | manual | 1d | 2025-09-23 A | 2025-09-23 A | 4 | 100% | 2025-09-23 | 2025-09-23 | 1d |  | Director de proyecto 1 [20%]; Director de proyecto 2 [20%]; Director de proyecto 3 [20%]; Director de proyecto 4 [20%]; Director de proyecto 5 [20%] | 3h | 3h | 82.5 | 82.5 | 82.5 |
| 8 | 1.2.2 | Plan de Gestión de Comunicaciones | manual | 1d | 2025-09-23 A | 2025-09-23 A | 4 | 100% | 2025-09-23 | 2025-09-23 | 1d |  | Director de proyecto 1 [20%]; Director de proyecto 2 [20%]; Director de proyecto 3 [20%]; Director de proyecto 4 [20%]; Director de proyecto 5 [20%] | 3h | 3h | 82.5 | 82.5 | 82.5 |
| 9 | 1.2.3 | Plan de Gestión de Requisitos | manual | 1d | 2025-09-23 A | 2025-09-23 A | 4 | 100% | 2025-09-23 | 2025-09-23 | 1d |  | Analista funcional | 3h | 3h | 76.41 | 76.41 | 76.41 |
| 10 | 1.2.4 | Registro de Requisitos | manual | 2d | 2025-09-24 A | 2025-09-24 A | 9 | 100% | 2025-09-24 | 2025-09-24 | 2d |  | Analista funcional | 6h | 6h | 152.82 | 152.82 | 152.82 |
| 11 | 1.2.5 | Matriz de trazabilidad de requsitos | manual | 2d | 2025-09-26 A | 2025-09-26 A | 10 | 100% | 2025-09-26 | 2025-09-26 | 2d |  | Analista funcional | 6h | 6h | 152.82 | 152.82 | 152.82 |
| 12 | 1.2.6 | Plan de Gestión del Alcance | manual | 2d | 2025-09-30 A | 2025-09-30 A | 11 | 100% | 2025-09-30 | 2025-09-30 | 2d |  | Director de proyecto 1 [20%]; Director de proyecto 2 [20%]; Director de proyecto 3 [20%]; Director de proyecto 4 [20%]; Director de proyecto 5 [20%] | 6h | 6h | 165 | 165 | 165 |
| 13 | 1.2.7 | Enunciado del Alcance | manual | 1d | 2025-10-02 A | 2025-10-02 A | 12 | 100% | 2025-10-02 | 2025-10-02 | 1d |  | Director de proyecto 1 [20%]; Director de proyecto 2 [20%]; Director de proyecto 3 [20%]; Director de proyecto 4 [20%]; Director de proyecto 5 [20%] | 3h | 3h | 82.5 | 82.5 | 82.5 |
| 14 | 1.2.8 | EDT | manual | 3d | 2025-10-03 A | 2025-10-06 A | 13 | 100% | 2025-10-03 | 2025-10-06 | 3d |  | Director de proyecto 1 [20%]; Director de proyecto 2 [20%]; Director de proyecto 3 [20%]; Director de proyecto 4 [20%]; Director de proyecto 5 [20%] | 9h | 9h | 247.5 | 247.5 | 247.5 |
| 15 | 1.2.9 | Diccionario de la EDT | manual | 1d | 2025-10-08 A | 2025-10-08 A | 14 | 100% | 2025-10-08 | 2025-10-08 | 1d |  | Director de proyecto 1 [20%]; Director de proyecto 2 [20%]; Director de proyecto 3 [20%]; Director de proyecto 4 [20%]; Director de proyecto 5 [20%] | 3h | 3h | 82.5 | 82.5 | 82.5 |
| 16 | 1.2.10 | Plan de Gestión del Cronograma | manual | 1d | 2025-10-09 A | 2025-10-09 A | 15 | 100% | 2025-10-09 | 2025-10-09 | 1d |  | Director de proyecto 1 [20%]; Director de proyecto 2 [20%]; Director de proyecto 3 [20%]; Director de proyecto 4 [20%]; Director de proyecto 5 [20%] | 3h | 3h | 82.5 | 82.5 | 82.5 |
| 17 | 1.2.11 | Lista de Actividades | manual | 2d | 2025-10-10 A | 2025-10-10 A | 16 | 100% | 2025-10-10 | 2025-10-10 | 2d |  | Director de proyecto 1 [20%]; Director de proyecto 2 [20%]; Director de proyecto 3 [20%]; Director de proyecto 4 [20%]; Director de proyecto 5 [20%] | 6h | 6h | 165 | 165 | 165 |
| 18 | 1.2.12 | Atributos de Actividad | manual | 1d | 2025-10-15 A | 2025-10-15 A | 17 | 100% | 2025-10-15 | 2025-10-15 | 1d |  | Director de proyecto 1 [20%]; Director de proyecto 2 [20%]; Director de proyecto 3 [20%]; Director de proyecto 4 [20%]; Director de proyecto 5 [20%] | 3h | 3h | 82.5 | 82.5 | 82.5 |
| 19 | 1.2.13 | Lista de Hitos | manual | 1d | 2025-10-10 A | 2025-10-10 A | 16 | 100% | 2025-10-10 | 2025-10-10 | 1d |  | Director de proyecto 1 [20%]; Director de proyecto 2 [20%]; Director de proyecto 3 [20%]; Director de proyecto 4 [20%]; Director de proyecto 5 [20%] | 3h | 3h | 82.5 | 82.5 | 82.5 |
| 20 | 1.2.14 | Cronograma | manual | 2d | 2025-10-15 A | 2025-10-15 A | 17 | 100% | 2025-10-15 | 2025-10-15 | 2d |  | Director de proyecto 1 [20%]; Director de proyecto 2 [20%]; Director de proyecto 3 [20%]; Director de proyecto 4 [20%]; Director de proyecto 5 [20%] | 6h | 6h | 165 | 165 | 165 |
| 21 | 1.2.15 | Plan de Gestión de la Calidad | manual | 3d | 2025-10-17 A | 2025-10-20 A | 20 | 100% | 2025-10-17 | 2025-10-20 | 3d |  | Director de proyecto 1 [20%]; Director de proyecto 2 [20%]; Director de proyecto 3 [20%]; Director de proyecto 4 [20%]; Director de proyecto 5 [20%] | 9h | 9h | 247.5 | 247.5 | 247.5 |
| 22 | 1.2.16 | Plan de Gestión de Riesgos | manual | 2d | 2025-10-17 A | 2025-10-17 A | 20 | 100% | 2025-10-17 | 2025-10-17 | 2d |  | Director de proyecto 1 [20%]; Director de proyecto 2 [20%]; Director de proyecto 3 [20%]; Director de proyecto 4 [20%]; Director de proyecto 5 [20%] | 6h | 6h | 165 | 165 | 165 |
| 23 | 1.2.17 | Registro de Riesgos | manual | 1d | 2025-10-21 A | 2025-10-21 A | 22 | 100% | 2025-10-21 | 2025-10-21 | 1d |  | Director de proyecto 1 [20%]; Director de proyecto 2 [20%]; Director de proyecto 3 [20%]; Director de proyecto 4 [20%]; Director de proyecto 5 [20%] | 3h | 3h | 82.5 | 82.5 | 82.5 |
| 24 | 1.2.18 | Plan de Gestión de Recursos | manual | 4d | 2025-10-17 A | 2025-10-20 A | 20 | 100% | 2025-10-17 | 2025-10-20 | 4d |  | Director de proyecto 1 [20%]; Director de proyecto 2 [20%]; Director de proyecto 3 [20%]; Director de proyecto 4 [20%]; Director de proyecto 5 [20%] | 12h | 12h | 330 | 330 | 330 |
| 25 | 1.2.19 | Matriz de Asignación de Responsabilidades | manual | 1d | 2025-10-23 A | 2025-10-23 A | 24 | 100% | 2025-10-23 | 2025-10-23 | 1d |  | Director de proyecto 1 [20%]; Director de proyecto 2 [20%]; Director de proyecto 3 [20%]; Director de proyecto 4 [20%]; Director de proyecto 5 [20%] | 3h | 3h | 82.5 | 82.5 | 82.5 |
| 26 | 1.2.20 | Plan de Gestión de Adquisiciones | manual | 1d | 2025-10-23 A | 2025-10-23 A | 24 | 100% | 2025-10-23 | 2025-10-23 | 1d |  | Director de proyecto 1 [20%]; Director de proyecto 2 [20%]; Director de proyecto 3 [20%]; Director de proyecto 4 [20%]; Director de proyecto 5 [20%] | 3h | 3h | 82.5 | 82.5 | 82.5 |
| 27 | 1.2.21 | Plan de Gestión de Costes | manual | 4d | 2025-10-23 A | 2025-10-24 A | 24 | 100% | 2025-10-23 | 2025-10-24 | 4d |  | Director de proyecto 1 [20%]; Director de proyecto 2 [20%]; Director de proyecto 3 [20%]; Director de proyecto 4 [20%]; Director de proyecto 5 [20%] | 12h | 12h | 330 | 330 | 330 |
| 28 | 1.2.22 | Plan de gestión de cambios y de la configuración | manual | 4d | 2025-10-23 A | 2025-10-24 A | 24 | 100% | 2025-10-23 | 2025-10-24 | 4d |  | Director de proyecto 1 [20%]; Director de proyecto 2 [20%]; Director de proyecto 3 [20%]; Director de proyecto 4 [20%]; Director de proyecto 5 [20%] | 12h | 12h | 330 | 330 | 330 |
| 29 | 1.3 | Análisis de requisitos y diseño base de datos | manual | 2.17d | 2025-10-29 A | 2025-10-29 A | 28 | 100% | 2025-10-29 | 2025-10-30 | 3d |  | Analista funcional; Responsable de calidad | 13h | 13h | 322.73 | 446.85 | 322.73 |
| 30 | 1.4 | Desarrollo de cesta de compra | manual | 14.67d | 2025-11-01 A | 2025-11-07 A | 29 | 100% | 2025-11-01 | 2025-11-07 | 14d | start no earlier than 2025-11-01 | Programador 1 [20%]; Programador 2 [20%]; Programador 3 [20%]; Programador 4 [20%]; Programador 5 [20%] | 44h | 44h | 880 | 840 | 880 |
| 31 | 1.5 | Desarrollo del catálogo | manual | 12d | 2025-11-01 A | 2025-11-06 A | 29 | 100% | 2025-11-01 | 2025-11-07 | 14d |  | Programador 1 [20%]; Programador 2 [20%]; Programador 3 [20%]; Programador 4 [20%]; Programador 5 [20%] | 36h | 36h | 720 | 840 | 720 |
| 32 | 1.6 | Desarrollo proceso compra | manual | 15d | 2025-11-01 A | 2025-11-07 A | 29 | 100% | 2025-11-01 | 2025-11-07 | 14d |  | Programador 1 [20%]; Programador 2 [20%]; Programador 3 [20%]; Programador 4 [20%]; Programador 5 [20%] | 45h | 45h | 900 | 840 | 900 |
| 33 | 1.7 | Desarrollo inventarios | manual | 12.33d | 2025-11-01 A | 2025-11-06 A | 29 | 100% | 2025-11-01 | 2025-11-07 | 14d |  | Programador 1 [20%]; Programador 2 [20%]; Programador 3 [20%]; Programador 4 [20%]; Programador 5 [20%] | 37h | 37h | 740 | 840 | 740 |
| 34 | 1.8 | Pruebas | manual | 2.53d | 2025-11-20 A | 2025-11-20 A | 30, 31, 32, 33 | 100% | 2025-11-20 | 2025-11-21 | 5d |  | Programador 1; Programador 2; Programador 3; Programador 4; Programador 5 | 38h | 38h | 760 | 1,500 | 760 |
| 35 | 1.9 | Despliegue | manual | 1.33d | 2025-11-27 A | 2025-11-27 A | 34 | 100% | 2025-11-27 | 2025-11-27 | 2d |  | Programador 1 [20%]; Programador 2 [20%]; Programador 3 [20%]; Programador 4 [20%]; Programador 5 [20%] | 4h | 4h | 80 | 120 | 80 |
| 36 | 1.10 | Informes de seguimiento y desempeño | manual | 21.67d | 2025-11-01 A | 2025-11-12 A | 29 | 100% | 2025-11-01 | 2025-11-11 | 21d |  | Director de proyecto 1 [10%]; Responsable de calidad [50%] | 39h | 39h | 964.6 | 934.92 | 964.6 |

| ID | WBS | Task | Type | Duration | Start | Finish | Predecessors | Complete | Baseline start | Baseline finish | Baseline duration | Resources | Work | Actual work | Cost | Baseline cost | Actual cost |
| --- | --- | --- | --- | --- | --- | --- | --- | --- | --- | --- | --- | --- | --- | --- | --- | --- | --- |
| 37 | 1.11 | **Cierre** |  | 2.57d | 2025-12-01 A | 2025-12-01 A |  | 100% | 2025-12-01 | 2025-12-02 | 3d |  | 22h | 22h | 580.61 | 712.62 | 580.61 |
| 38 | 1.11.1 | Lecciones aprendidas | manual | 2.22d | 2025-12-01 A | 2025-12-01 A | 35 | 100% | 2025-12-01 | 2025-12-02 | 3d | Director de proyecto 1 [20%]; Responsable de calidad [50%]; Director de proyecto 2 [20%]; Director de proyecto 3 [20%]; Director de proyecto 4 [20%]; Director de proyecto 5 [20%] | 10h | 10h | 263.93 | 356.31 | 263.93 |
| 39 | 1.11.2 | Cierre | manual | 2.57d | 2025-12-01 A | 2025-12-01 A | 35 | 100% | 2025-12-01 | 2025-12-02 | 3d | Director de proyecto 1 [20%]; Responsable de calidad [50%]; Director de proyecto 2 [20%]; Director de proyecto 3 [20%]; Director de proyecto 4 [20%]; Director de proyecto 5 [20%] | 12h | 12h | 316.68 | 356.31 | 316.68 |
